# Seguimiento G1 - EDGAR ARTEAGA

Schedule from MS Project, 2015-02-27 to 2017-10-05, A marks actual dates.

## Calendars

- Estándar: Mon-Fri 09:00-13:00, 15:00-19:00; Sat-Sun off.

## Resources

| Resource |
| --- |
| ADRIANA MIRANDA |
| ANELIZ CLAURE |
| GABRIELA DEL LLANO |
| JOSE LUIS CASTRO |
| MARCELO ESCOBAR |
| MIGUEL MOLLO |
| RENE ERGUETA |
| ROGER RUIZ |
| VICTOR RAMOS |

## Schedule

| ID | WBS | Task | Type | Duration | Start | Finish | Complete | Remaining | Actual start | Actual finish | Total slack | Resources | Work | Actual work |
| --- | --- | --- | --- | --- | --- | --- | --- | --- | --- | --- | --- | --- | --- | --- |
| 1 | 1 | **EDGAR ARTEAGA** |  | 680d? | 2015-02-27 A | 2017-10-05 | 92% | 53.04d? |  |  | 0d |  | 8696h | 5832h |
| 2 | 1.1 | **TRANSITOS** |  | 291d? | 2016-03-15 A | 2017-04-25 A | 100% |  |  |  |  |  | 752h | 752h |
| 3 | 1.1.1 | **Variables de Riesgo** |  | 93d | 2016-05-23 A | 2016-09-28 A | 100% |  |  |  |  | JOSE LUIS CASTRO | 744h | 744h |
| 4 | 1.1.1.1 | Desarrollo | manual | 12d | 2016-05-23 A | 2016-06-07 A | 100% |  |  |  |  |  |  |  |
| 5 | 1.1.1.2 | Control Calidad | manual | 8d | 2016-06-07 A | 2016-06-16 A | 100% |  |  |  |  |  |  |  |
| 6 | 1.1.1.3 | Control Funcional | manual | 79d | 2016-06-09 A | 2016-09-27 A | 100% |  |  |  |  |  |  |  |
| 7 | 1.1.1.4 | Puesta Producción | manual | 1d | 2016-09-28 A | 2016-09-28 A | 100% |  |  |  |  |  |  |  |
| 8 | 1.1.1.5 | **Nuevo Requerimiento** |  | 23d | 2016-05-31 | 2016-06-30 | 100% |  | 2016-06-06 | 2016-06-06 |  |  |  |  |
| 9 | 1.1.1.5.1 | Control de calidad | manual | 1d | 2016-06-06 A | 2016-06-06 A | 100% |  |  |  |  |  |  |  |
| 10 | 1.1.2 | **Tipo de Documento Organismos Internacionales** |  | 1d | 2016-03-15 A | 2016-03-15 A | 100% |  |  |  |  | JOSE LUIS CASTRO | 8h | 8h |
| 11 | 1.1.2.1 | Desarrollo | manual | 1d | 2016-03-15 A | 2016-03-15 A | 100% |  |  |  |  |  |  |  |
| 12 | 1.1.2.2 | Control Calidad | manual | 1d | 2016-03-15 A | 2016-03-15 A | 100% |  |  |  |  |  |  |  |
| 13 | 1.1.2.3 | Control Funcional | manual | 1d | 2016-03-15 A | 2016-03-15 A | 100% |  |  |  |  |  |  |  |
| 14 | 1.1.2.4 | Puesta Producción | manual | 1d | 2016-03-15 A | 2016-03-15 A | 100% |  |  |  |  |  |  |  |
| 15 | 1.1.3 | **Autorizaciones Previas Enmienda** |  | 134d | 2016-08-19 A | 2017-02-22 A | 100% |  |  |  |  |  |  |  |
| 16 | 1.1.3.1 | Requerimiento Modificacion | manual | 11d | 2016-08-19 A | 2016-09-02 A | 100% |  |  |  |  |  |  |  |
| 17 | 1.1.3.2 | Control de calidad | manual | 2d | 2016-09-06 A | 2016-09-07 A | 100% |  |  |  |  |  |  |  |
| 18 | 1.1.3.3 | Control Funcional | manual | 122d | 2016-09-06 A | 2017-02-22 A | 100% |  |  |  |  |  |  |  |
| 19 | 1.1.4 | **Autorizaciones Previas Enmienda Modificado** |  | 45d? | 2017-02-22 A | 2017-04-25 A | 100% |  |  |  |  |  |  |  |
| 20 | 1.1.4.1 | Requerimiento Modificacion | manual | 11d | 2017-02-22 A | 2017-03-08 A | 100% |  |  |  |  |  |  |  |
| 21 | 1.1.4.2 | Control de calidad | manual | 12d | 2017-03-07 A | 2017-03-22 A | 100% |  |  |  |  |  |  |  |
| 22 | 1.1.4.3 | Control Funcional | manual | 27d | 2017-03-07 A | 2017-04-12 A | 100% |  |  |  |  |  |  |  |
| 23 | 1.1.4.4 | Puesta Producción | manual | 1d | 2017-04-25 A | 2017-04-25 A | 100% |  |  |  |  |  |  |  |
| 24 | 1.1.5 | **Proceso Abreviado** |  | 82d | 2016-07-05 A | 2016-10-26 A | 100% |  |  |  |  |  |  |  |
| 25 | 1.1.5.1 | Desarrollo | manual | 5d | 2016-07-05 A | 2016-07-11 A | 100% |  |  |  |  |  |  |  |
| 26 | 1.1.5.2 | Control de calidad | manual | 11d | 2016-07-11 A | 2016-07-25 A | 100% |  |  |  |  |  |  |  |
| 27 | 1.1.5.3 | Control Funcional | manual | 77d | 2016-07-11 A | 2016-10-25 A | 100% |  |  |  |  |  |  |  |
| 28 | 1.1.5.4 | Puesta Producción | manual | 1d | 2016-10-26 A | 2016-10-26 A | 100% |  |  |  |  |  |  |  |

| ID | WBS | Task | Type | Duration | Start | Finish | Complete | Remaining | Actual start | Total slack | Resources | Work | Actual work |
| --- | --- | --- | --- | --- | --- | --- | --- | --- | --- | --- | --- | --- | --- |
| 29 | 1.1.6 | **Proceso Abreviado 2da Parte** |  | 78d | 2016-07-11 A | 2016-10-26 A | 100% |  |  |  |  |  |  |
| 30 | 1.1.6.1 | Desarrollo | milestone, manual | 0d | 2016-07-19 A | 2016-07-19 A | 100% |  |  |  |  |  |  |
| 31 | 1.1.6.2 | Control de calidad | manual | 11d | 2016-07-11 A | 2016-07-25 A | 100% |  |  |  |  |  |  |
| 32 | 1.1.6.3 | Control Funcional | manual | 77d | 2016-07-11 A | 2016-10-25 A | 100% |  |  |  |  |  |  |
| 33 | 1.1.6.4 | Puesta Producción | manual | 1d | 2016-10-26 A | 2016-10-26 A | 100% |  |  |  |  |  |  |
| 34 | 1.1.7 | **Modificacion Control 2752** |  | 2d | 2016-09-12 A | 2016-09-13 A | 100% |  |  |  |  |  |  |
| 35 | 1.1.7.1 | Desarrollo | manual | 1d | 2016-09-12 A | 2016-09-12 A | 100% |  |  |  |  |  |  |
| 36 | 1.1.7.2 | Control de calidad | manual | 2d | 2016-09-12 A | 2016-09-13 A | 100% |  |  |  |  |  |  |
| 37 | 1.1.7.3 | Control Funcional | manual | 2d | 2016-09-12 A | 2016-09-13 A | 100% |  |  |  |  |  |  |
| 38 | 1.1.7.4 | Puesta en Produccion | manual | 1d | 2016-09-13 A | 2016-09-13 A | 100% |  |  |  |  |  |  |
| 39 | 1.1.8 | **Registro de justificaciones de Transitos Fuera de Plazo** |  | 56d | 2016-10-24 A | 2017-01-09 A | 100% |  |  |  |  |  |  |
| 40 | 1.1.8.1 | Desarrollo | manual | 25d | 2016-10-24 A | 2016-11-25 A | 100% |  |  |  |  |  |  |
| 41 | 1.1.8.2 | Control de calidad | manual | 6d | 2016-12-06 A | 2016-12-13 A | 100% |  |  |  |  |  |  |
| 42 | 1.1.8.3 | Control Funcional | manual | 13d | 2016-12-14 A | 2016-12-30 A | 100% |  |  |  |  |  |  |
| 43 | 1.1.8.4 | Puesta en Produccion | manual | 1d | 2017-01-09 A | 2017-01-09 A | 100% |  |  |  |  |  |  |
| 44 | 1.2 | **FISAP** |  | 680d | 2015-02-27 A | 2017-10-05 | 87% | 86.93d |  | 0d |  | 6664h | 3992h |
| 45 | 1.2.1 | **Generacion Orden** |  | 144d | 2015-08-03 | 2016-02-18 A | 100% |  | 2015-02-27 |  | JOSE LUIS CASTRO | 1152h | 1152h |
| 46 | 1.2.1.1 | Desarrollo | manual | 8d | 2015-02-27 A | 2015-03-10 A | 100% |  |  |  |  |  |  |
| 47 | 1.2.1.2 | Control Calidad | manual | 53d | 2015-03-10 A | 2015-05-21 A | 100% |  |  |  |  |  |  |
| 48 | 1.2.1.3 | Control Funcional | manual | 212d | 2015-03-10 A | 2015-12-30 A | 100% |  |  |  |  |  |  |
| 49 | 1.2.2 | **Documentos generados de la Orden posterior** |  | 74d | 2016-08-02 A | 2016-11-11 A | 100% |  |  |  | JOSE LUIS CASTRO | 392h | 392h |
| 50 | 1.2.2.1 | Elaboracion de Requerimientos | manual | 29d | 2016-08-02 A | 2016-09-09 A | 100% |  |  |  |  |  |  |
| 51 | 1.2.2.2 | Desarrollo | manual | 45d | 2016-09-12 A | 2016-11-11 A | 100% |  |  |  |  |  |  |
| 52 | 1.2.3 | **Generacion de la Orden de Fiscalizacion Reformulado** |  | 122d | 2016-08-02 | 2017-01-18 A | 100% |  | 2016-09-06 |  | JOSE LUIS CASTRO | 776h | 776h |
| 53 | 1.2.3.1 | Desarrollo | manual | 7d | 2017-01-02 A | 2017-01-10 A | 100% |  |  |  |  |  |  |
| 54 | 1.2.3.2 | Control Calidad | manual | 8d | 2017-01-05 A | 2017-01-16 A | 100% |  |  |  |  |  |  |
| 55 | 1.2.3.3 | Control Funcional | manual | 7d | 2017-01-09 A | 2017-01-17 A | 100% |  |  |  |  |  |  |
| 56 | 1.2.3.4 | Puesta Producción | manual | 1d | 2017-01-18 A | 2017-01-18 A | 100% |  |  |  |  |  |  |

| ID | WBS | Task | Type | Duration | Start | Finish | Complete | Remaining | Actual start | Resources | Work | Actual work |
| --- | --- | --- | --- | --- | --- | --- | --- | --- | --- | --- | --- | --- |
| 57 | 1.2.4 | **Seguimiento y Conclusion de la Orden** |  | 162d | 2016-08-02 | 2017-03-15 | 99% | 0d | 2016-09-06 | JOSE LUIS CASTRO | 1096h | 392h |
| 58 | 1.2.4.1 | Desarrollo | manual | 15d | 2017-01-10 A | 2017-01-30 A | 100% |  |  |  |  |  |
| 59 | 1.2.4.2 | Control Calidad | manual | 13d | 2017-01-30 A | 2017-02-15 A | 100% |  |  |  |  |  |
| 60 | 1.2.4.3 | Control Funcional | manual | 33d | 2017-01-30 A | 2017-03-15 A | 100% |  |  |  |  |  |
| 61 | 1.2.5 | **Proceso de Migración de las órdenes del SICODIF de la Gestión 2017** |  | 135d | 2016-08-02 A | 2017-02-06 | 75% | 33.75d |  | JOSE LUIS CASTRO | 880h | 392h |
| 62 | 1.2.5.1 | Desarrollo | manual | 6d | 2017-01-30 A | 2017-02-06 A | 100% |  |  |  |  |  |
| 63 | 1.2.5.2 | Control Funcional | manual | 1d | 2017-02-06 | 2017-02-06 |  |  |  |  |  |  |
| 64 | 1.2.5.3 | Puesta Producción | manual | 1d | 2016-08-02 | 2016-08-02 |  |  |  |  |  |  |
| 65 | 1.2.6 | **Reportes de Resultados de la Orden (Cuadro de Liquidacion y Resumen de Tributos Omitidos)** |  | 186d | 2016-08-02 | 2017-04-18 | 99% | 0d | 2016-09-06 | JOSE LUIS CASTRO | 1288h | 392h |
| 66 | 1.2.6.1 | Desarrollo | manual | 32d | 2017-01-06 A | 2017-02-20 A | 100% |  |  |  |  |  |
| 67 | 1.2.6.2 | Control Calidad | manual | 40d | 2017-02-22 A | 2017-04-18 A | 100% |  |  |  |  |  |
| 68 | 1.2.6.3 | Control Funcional | manual | 18d | 2017-02-20 A | 2017-03-15 A | 100% |  |  |  |  |  |
| 69 | 1.2.7 | **Modificacion a las opciones de Seguimiento y Conclusion de la Orden** |  | 38d | 2017-03-15 | 2017-05-05 | 14% | 32.57d | 2017-01-30 | JOSE LUIS CASTRO | 104h | 104h |
| 70 | 1.2.7.1 | Desarrollo | manual | 12d | 2017-03-15 A | 2017-03-30 A | 100% |  |  |  |  |  |
| 71 | 1.2.7.2 | Control Calidad | manual | 70d | 2017-01-30 | 2017-05-05 |  |  |  |  |  |  |
| 72 | 1.2.7.3 | Control Funcional | manual | 1d | 2017-03-30 | 2017-03-30 |  |  |  |  |  |  |
| 73 | 1.2.7.4 | Puesta Producción | manual | 1d | 2017-03-15 | 2017-03-15 |  |  |  |  |  |  |
| 74 | 1.2.8 | **Reportes de explotación de información del sistema de fiscalización** |  | 147d | 2017-03-15 | 2017-10-05 |  | 147d | 2017-04-19 | JOSE LUIS CASTRO | 976h | 392h |
| 75 | 1.2.8.1 | Definicion de los requerimientos | manual | 1d? | 2017-03-15 | 2017-03-15 |  |  |  |  |  |  |
| 76 | 1.2.8.2 | Desarrollo | manual | 1d | 2017-03-15 | 2017-03-15 |  |  |  |  |  |  |
| 77 | 1.2.8.3 | Control Calidad | manual | 1d | 2017-03-15 | 2017-03-15 |  |  |  |  |  |  |
| 78 | 1.2.8.4 | Control Funcional | manual | 1d | 2017-03-15 | 2017-03-15 |  |  |  |  |  |  |
| 79 | 1.2.8.5 | Puesta Producción | manual | 1d | 2017-03-15 | 2017-03-15 |  |  |  |  |  |  |
| 80 | 1.3 | **ACTIVOS FIJOS** |  | 183d | 2016-08-31 A | 2017-05-12 | 96% | 7.04d |  |  | 1280h | 1088h |
| 81 | 1.3.1 | **Modificacion de Opciones** |  | 123d | 2016-08-31 A | 2017-02-17 A | 100% |  |  | JOSE LUIS CASTRO | 984h | 984h |
| 82 | 1.3.1.1 | Desarrollo | manual | 12d | 2016-08-31 A | 2016-09-15 A | 100% |  |  |  |  |  |
| 83 | 1.3.1.2 | Control Calidad | manual | 6d | 2016-09-16 A | 2016-09-23 A | 100% |  |  |  |  |  |
| 84 | 1.3.1.3 | Control Funcional | manual | 106d | 2016-09-16 A | 2017-02-10 A | 100% |  |  |  |  |  |
| 85 | 1.3.1.4 | Puesta Producción | manual | 1d | 2017-02-17 A | 2017-02-17 A | 100% |  |  |  |  |  |

Notes:
- 57: Se realizó una reformulación del requerimiento en fecha 15/03/2017.
- 63: Se esta a la espera de la confirmacin por parte de la GNF
- 65: Se realizó una reformulación del requerimiento en fecha 15/03/2017.
- 72: Se esta a la espera del control funcional para la implementacion en el ambiente de produccion
- 75: Se esta a la espera de la correccion de las observaciones en los reportes remitidos por la GNF

| ID | WBS | Task | Type | Duration | Start | Finish | Complete | Remaining | Resources | Work | Actual work |
| --- | --- | --- | --- | --- | --- | --- | --- | --- | --- | --- | --- |
| 86 | 1.3.2 | **Modificacion de Opciones y Creacion de Reportes** |  | 37d | 2017-03-23 A | 2017-05-12 |  | 37d | JOSE LUIS CASTRO | 296h | 104h |
| 87 | 1.3.2.1 | Analisis de requerimiento | manual | 1d? | 2017-03-23 | 2017-03-23 |  |  |  |  |  |
| 88 | 1.3.2.2 | Desarrollo | manual | 1d | 2017-03-23 | 2017-03-23 |  |  |  |  |  |
| 89 | 1.3.2.3 | Control Calidad | manual | 1d | 2017-03-23 | 2017-03-23 |  |  |  |  |  |
| 90 | 1.3.2.4 | Control Funcional | manual | 1d | 2017-03-23 | 2017-03-23 |  |  |  |  |  |
| 91 | 1.3.2.5 | Puesta Producción | manual | 1d | 2017-03-23 | 2017-03-23 |  |  |  |  |  |
| 92 | 1.4 | **SICODIF** |  | 261d | 2016-04-11 A | 2017-04-10 A | 100% |  |  |  |  |
| 93 | 1.4.1 | **Habilitacion de la GNF en el SICODIF** |  | 13d | 2016-10-14 A | 2016-11-01 A | 100% |  |  |  |  |
| 94 | 1.4.1.1 | Desarrollo | manual | 1d | 2016-10-14 A | 2016-10-14 A | 100% |  |  |  |  |
| 95 | 1.4.1.2 | Control Calidad | manual | 3d | 2016-10-14 A | 2016-10-18 A | 100% |  |  |  |  |
| 96 | 1.4.1.3 | Control Funcional | manual | 7d | 2016-10-14 A | 2016-10-24 A | 100% |  |  |  |  |
| 97 | 1.4.1.4 | Puesta Producción | manual | 1d | 2016-11-01 A | 2016-11-01 A | 100% |  |  |  |  |
| 98 | 1.4.2 | **Reporte Concesionarios** |  | 25d | 2016-09-28 A | 2016-11-01 A | 100% |  |  |  |  |
| 99 | 1.4.2.1 | Desarrollo | manual | 13d | 2016-09-28 A | 2016-10-14 A | 100% |  |  |  |  |
| 100 | 1.4.2.2 | Control Calidad | manual | 3d | 2016-10-14 A | 2016-10-18 A | 100% |  |  |  |  |
| 101 | 1.4.2.3 | Control Funcional | manual | 7d | 2016-10-14 A | 2016-10-24 A | 100% |  |  |  |  |
| 102 | 1.4.2.4 | Puesta Producción | manual | 1d | 2016-11-01 A | 2016-11-01 A | 100% |  |  |  |  |
| 103 | 1.4.3 | **Validacion para control de Recibos de Pago** |  | 12d | 2016-10-17 A | 2016-11-01 A | 100% |  |  |  |  |
| 104 | 1.4.3.1 | Desarrollo | manual | 1d | 2016-10-17 A | 2016-10-17 A | 100% |  |  |  |  |
| 105 | 1.4.3.2 | Control Calidad | manual | 10d | 2016-10-17 A | 2016-10-28 A | 100% |  |  |  |  |
| 106 | 1.4.3.3 | Puesta Producción | manual | 1d | 2016-11-01 A | 2016-11-01 A | 100% |  |  |  |  |
| 107 | 1.4.4 | **Adecuaciones Solicitadas al SICODIF por el GNF-DIA** |  | 261d | 2016-04-11 A | 2017-04-10 A | 100% |  |  |  |  |
| 108 | 1.4.4.1 | Desarrollo | manual | 34d | 2017-01-17 A | 2017-03-03 A | 100% |  |  |  |  |
| 109 | 1.4.4.2 | Control Calidad | manual | 26d | 2017-03-06 A | 2017-04-10 A | 100% |  |  |  |  |
| 110 | 1.4.4.3 | Control Funcional | manual | 16d | 2017-03-06 A | 2017-03-27 A | 100% |  |  |  |  |
| 111 | 1.4.4.4 | Puesta Producción | manual | 1d | 2016-04-11 A | 2016-04-11 A | 100% |  |  |  |  |

Notes:
- 87: Se estan llevando a cabo reuniones para denifir las adecuaciones que se realizaran al sistema

| ID | WBS | Task | Type | Duration | Start | Finish | Complete | Remaining | Actual finish | Total slack |
| --- | --- | --- | --- | --- | --- | --- | --- | --- | --- | --- |
| 112 | 1.5 | **ANBFLOW** |  | 145d | 2016-09-16 A | 2017-04-06 A | 100% |  |  |  |
| 113 | 1.5.1 | **Adecuaciones Solicitadas por DAS** |  | 129d | 2016-09-16 A | 2017-03-15 | 100% |  | 2016-09-19 |  |
| 114 | 1.5.1.1 | Desarrollo | manual | 2d | 2016-09-16 A | 2016-09-19 A | 100% |  |  |  |
| 115 | 1.5.1.2 | Puesta Producción | manual | 1d | 2016-09-19 A | 2016-09-19 A | 100% |  |  |  |
| 116 | 1.5.2 | **Habilitación del Tipo de Prioridad "OEA"** |  | 24d | 2017-02-08 A | 2017-03-13 A | 100% |  |  |  |
| 117 | 1.5.2.1 | Desarrollo | manual | 8d | 2017-02-08 A | 2017-02-17 A | 100% |  |  |  |
| 118 | 1.5.2.2 | Control Calidad | manual | 1d | 2017-02-17 A | 2017-02-17 A | 100% |  |  |  |
| 119 | 1.5.2.3 | Control Funcional | manual | 12d | 2017-02-17 A | 2017-03-06 A | 100% |  |  |  |
| 120 | 1.5.2.4 | Puesta Producción | manual | 6d | 2017-03-06 A | 2017-03-13 A | 100% |  |  |  |
| 121 | 1.5.3 | **Agregar validación para que no se puedan devolver tramites a usuarios deshabilitados** |  | 21d | 2017-03-09 A | 2017-04-06 A | 100% |  |  |  |
| 122 | 1.5.3.1 | Desarrollo | manual | 5d | 2017-03-09 A | 2017-03-15 A | 100% |  |  |  |
| 123 | 1.5.3.2 | Control Calidad | manual | 4d | 2017-03-14 A | 2017-03-17 A | 100% |  |  |  |
| 124 | 1.5.3.3 | Control Funcional | manual | 11d | 2017-03-14 A | 2017-03-28 A | 100% |  |  |  |
| 125 | 1.5.3.4 | Puesta Producción | manual | 1d | 2017-04-06 A | 2017-04-06 A | 100% |  |  |  |
| 126 | 1.6 | **SIGEPLASE** |  | 4d | 2016-08-26 A | 2016-08-31 A | 100% |  |  |  |
| 127 | 1.6.1 | **Colaboración para implementación** |  | 4d | 2016-08-26 A | 2016-08-31 A | 100% |  |  |  |
| 128 | 1.6.1.1 | Reunión de Configuración de Usuarios | manual | 1d | 2016-08-26 A | 2016-08-26 A | 100% |  |  |  |
| 129 | 1.6.1.2 | Reunión de Descripción de Tablas | manual | 1d | 2016-08-31 A | 2016-08-31 A | 100% |  |  |  |
| 132 | 1.7 | **DIGITALIZACION** |  | 13d | 2017-02-15 A | 2017-03-03 | 88% | 1.62d |  | 0d |
| 133 | 1.7.1 | **Adicion de reporte por fecha de proceso** |  | 13d | 2017-02-15 A | 2017-03-03 | 88% | 1.62d |  | 0d |
| 134 | 1.7.1.1 | Desarrollo | manual | 11d | 2017-02-15 A | 2017-03-01 A | 100% |  |  |  |
| 135 | 1.7.1.2 | Control Calidad | manual | 3d | 2017-03-01 A | 2017-03-03 A | 100% |  |  |  |
| 136 | 1.7.1.3 | Control Funcional | manual | 1d | 2017-03-01 | 2017-03-01 |  |  |  |  |
| 137 | 1.7.1.4 | Puesta Producción | manual | 1d | 2017-02-15 | 2017-02-15 |  |  |  |  |

| ID | WBS | Task | Type | Duration | Start | Finish | Remaining |
| --- | --- | --- | --- | --- | --- | --- | --- |
| 138 | 1.8 | **SICOPEA** |  | 1d | 2017-05-05 A | 2017-05-05 | 1d |
| 139 | 1.8.1 | **Creacion formulario acreditados Ley 617** |  | 1d | 2017-05-05 A | 2017-05-05 | 1d |
| 140 | 1.8.1.1 | Desarrollo | manual | 11d | 2017-05-05 | 2017-05-19 |  |
| 141 | 1.8.1.2 | Control Calidad | manual | 1d | 2017-05-05 | 2017-05-05 |  |
| 142 | 1.8.1.3 | Control Funcional | manual | 1d | 2017-05-05 | 2017-05-05 |  |
| 143 | 1.8.1.4 | Puesta Producción | manual | 1d | 2017-05-05 | 2017-05-05 |  |
| 144 | 1.8.2 | **Actualizacion via web service de la informacion de acreditados** |  | 1d | 2017-05-05 A | 2017-05-05 | 1d |
| 145 | 1.8.2.1 | Analisis de requerimiento | manual | 12d | 2017-05-05 | 2017-05-22 |  |
| 146 | 1.8.2.2 | Desarrollo | manual | 1d | 2017-05-05 | 2017-05-05 |  |
| 147 | 1.8.2.3 | Control Calidad | manual | 1d | 2017-05-05 | 2017-05-05 |  |
| 148 | 1.8.2.4 | Control Funcional | manual | 1d | 2017-05-05 | 2017-05-05 |  |
| 149 | 1.8.2.5 | Puesta Producción | manual | 1d | 2017-05-05 | 2017-05-05 |  |

Notes:
- 145: Elaboracion del documento de intercambio de informacion con cancilleria
